# GanttChart

Schedule from MS Project, 2013-08-07 to 2013-12-09, costs in $, A marks actual dates.

## Calendars

- Standard: Mon-Fri 08:00-12:00, 13:00-17:00; Sat-Sun off. Exceptions (off unless hours are given): 2013-10-26 08:00-12:00, 13:00-17:00, 2013-12-07 to 2013-12-08 08:00-12:00, 13:00-17:00.

## Resources

| Resource | Rate |
| --- | --- |
| Nelián Colón | 26.44 |
| Samuel Rodríguez | 21.63 |
| Daniel Santiago | 21.63 |

## Schedule

| ID | WBS | Task | Type | Duration | Start | Finish | Predecessors | Complete | Remaining | Total slack | Constraint | Deadline | Resources | Work | Actual work | Cost | Actual cost |
| --- | --- | --- | --- | --- | --- | --- | --- | --- | --- | --- | --- | --- | --- | --- | --- | --- | --- |
| 1 | 1 | **Panda Code Reviews** |  | 92d | 2013-08-07 A | 2013-12-09 |  | 42% | 53.21d | 0d |  | 2013-12-09 |  | 944h | 506h | 21,957.92 | 11,772.1 |
| 2 | 1.1 | **System Specification** |  | 5d | 2013-08-07 A | 2013-08-13 A |  | 100% |  |  |  |  |  | 120h | 120h | 2,788 | 2,788 |
| 3 | 1.1.1 | Definition of Needs |  | 1d | 2013-08-07 A | 2013-08-07 A |  | 100% |  |  |  |  | Daniel Santiago [50%]; Nelián Colón [50%]; Samuel Rodríguez [50%] | 24h | 24h | 557.6 | 557.6 |
| 4 | 1.1.2 | Concept Development |  | 1d | 2013-08-08 A | 2013-08-08 A | 3 | 100% |  |  |  |  | Daniel Santiago [50%]; Nelián Colón [50%]; Samuel Rodríguez [50%] | 24h | 24h | 557.6 | 557.6 |
| 5 | 1.1.3 | Analysis of Alternatives |  | 1d | 2013-08-09 A | 2013-08-09 A | 4 | 100% |  |  |  |  | Daniel Santiago [50%]; Nelián Colón [50%]; Samuel Rodríguez [50%] | 24h | 24h | 557.6 | 557.6 |
| 6 | 1.1.4 | System requirements Assessment |  | 1d | 2013-08-12 A | 2013-08-12 A | 5 | 100% |  |  |  |  | Daniel Santiago [50%]; Nelián Colón [50%]; Samuel Rodríguez [50%] | 24h | 24h | 557.6 | 557.6 |
| 7 | 1.1.5 | Specs Document Elaboration |  | 1d | 2013-08-13 A | 2013-08-13 A | 6 | 100% |  |  |  |  | Daniel Santiago [50%]; Nelián Colón [50%]; Samuel Rodríguez [50%] | 24h | 24h | 557.6 | 557.6 |
| 8 | 1.2 | **Proposal Development** |  | 13d | 2013-08-13 A | 2013-08-30 A |  | 100% |  |  |  | 2013-08-30 |  | 104h | 104h | 2,441.92 | 2,441.92 |
| 9 | 1.2.1 | Objectives | milestone | 0d | 2013-08-13 A | 2013-08-13 A | 7 | 100% |  |  |  |  | Samuel Rodríguez [50%] |  |  |  |  |
| 10 | 1.2.2 | Problem Statement |  | 1d | 2013-08-14 A | 2013-08-14 A | 9 | 100% |  |  |  |  | Samuel Rodríguez [50%] | 8h | 8h | 173.04 | 173.04 |
| 11 | 1.2.3 | Project Antecedents |  | 1d | 2013-08-14 A | 2013-08-14 A | 9 | 100% |  |  |  |  | Nelián Colón [50%] | 8h | 8h | 211.52 | 211.52 |
| 12 | 1.2.4 | General Approach |  | 1d | 2013-08-15 A | 2013-08-15 A | 11 | 100% |  |  |  |  | Nelián Colón [50%] | 8h | 8h | 211.52 | 211.52 |
| 13 | 1.2.5 | Personnel Workload Distribution |  | 1d | 2013-08-16 A | 2013-08-16 A | 12 | 100% |  |  |  |  | Nelián Colón [50%] | 8h | 8h | 211.52 | 211.52 |
| 14 | 1.2.6 | Budget |  | 1d | 2013-08-15 A | 2013-08-15 A | 10 | 100% |  |  |  |  | Samuel Rodríguez [50%] | 8h | 8h | 173.04 | 173.04 |
| 15 | 1.2.7 | Assessment Methods |  | 1d | 2013-08-20 A | 2013-08-20 A | 13 | 100% |  |  |  |  | Nelián Colón [50%] | 8h | 8h | 211.52 | 211.52 |
| 16 | 1.2.8 | Impact |  | 1d | 2013-08-14 A | 2013-08-14 A | 9 | 100% |  |  |  |  | Daniel Santiago [50%] | 8h | 8h | 173.04 | 173.04 |
| 17 | 1.2.9 | Market Overview |  | 1d | 2013-08-15 A | 2013-08-15 A | 11 | 100% |  |  |  |  | Daniel Santiago [50%] | 8h | 8h | 173.04 | 173.04 |
| 18 | 1.2.10 | Risk Management |  | 1d | 2013-08-16 A | 2013-08-16 A | 17 | 100% |  |  |  |  | Daniel Santiago [50%] | 8h | 8h | 173.04 | 173.04 |
| 19 | 1.2.11 | Executive Summary |  | 1d | 2013-08-21 A | 2013-08-21 A | 9, 10, 11, 12, 13, 14, 15, 16, 17, 18 | 100% |  |  |  |  | Samuel Rodríguez [50%] | 8h | 8h | 173.04 | 173.04 |
| 20 | 1.2.12 | First Draft Review |  | 1d | 2013-08-30 A | 2013-08-30 A | 19 | 100% |  |  |  |  | Daniel Santiago [50%]; Nelián Colón [50%]; Samuel Rodríguez [50%] | 24h | 24h | 557.6 | 557.6 |
| 21 | 1.3 | Final Proposal Review and Acceptance | milestone | 10d | 2013-09-02 A | 2013-09-13 A | 20 | 100% |  |  | finish no earlier than 2013-09-13 |  | Daniel Santiago [50%]; Nelián Colón [50%]; Samuel Rodríguez [50%] | 120h | 120h | 2,788 | 2,788 |
| 22 | 1.4 | Proposal Presentation |  | 2d | 2013-09-09 A | 2013-09-10 A | 21 | 100% |  |  |  |  | Daniel Santiago [50%]; Nelián Colón [50%]; Samuel Rodríguez [50%] | 48h | 48h | 1,115.2 | 1,115.2 |
| 23 | 1.5 | **System Design** |  | 10d | 2013-09-16 A | 2013-09-27 A | 8 | 100% |  |  |  | 2013-09-30 |  | 100h | 100h | 2,336.16 | 2,336.16 |
| 24 | 1.5.1 | **Front End Mockups** |  | 10d | 2013-09-16 A | 2013-09-27 A | 21 | 100% |  |  |  |  |  | 36h | 36h | 778.68 | 778.68 |
| 25 | 1.5.1.1 | Account Manager |  | 2d | 2013-09-16 A | 2013-09-17 A | 21 | 100% |  |  |  |  | Samuel Rodríguez [50%] | 8h | 8h | 173.04 | 173.04 |
| 26 | 1.5.1.2 | Repository Manager |  | 2d | 2013-09-19 A | 2013-09-20 A | 25 | 100% |  |  |  |  | Samuel Rodríguez [50%] | 8h | 8h | 173.04 | 173.04 |
| 27 | 1.5.1.3 | Testing Manager |  | 2d | 2013-09-23 A | 2013-09-24 A | 26 | 100% |  |  |  |  | Samuel Rodríguez [50%] | 8h | 8h | 173.04 | 173.04 |
| 28 | 1.5.1.4 | Source Code Viewer |  | 1d | 2013-09-25 A | 2013-09-25 A | 27 | 100% |  |  |  |  | Samuel Rodríguez [50%] | 4h | 4h | 86.52 | 86.52 |
| 29 | 1.5.1.5 | Source Code Annotator |  | 1d | 2013-09-26 A | 2013-09-26 A | 28 | 100% |  |  |  |  | Samuel Rodríguez [50%] | 4h | 4h | 86.52 | 86.52 |
| 30 | 1.5.1.6 | Grading |  | 1d | 2013-09-27 A | 2013-09-27 A | 29 | 100% |  |  |  |  | Samuel Rodríguez [50%] | 4h | 4h | 86.52 | 86.52 |

| ID | WBS | Task | Duration | Start | Finish | Predecessors | Complete | Remaining | Total slack | Free slack | Deadline | Resources | Work | Actual work | Cost | Actual cost |
| --- | --- | --- | --- | --- | --- | --- | --- | --- | --- | --- | --- | --- | --- | --- | --- | --- |
| 31 | 1.5.2 | **Back End** | 10d | 2013-09-16 A | 2013-09-27 A | 21 | 100% |  |  |  |  |  | 28h | 28h | 605.64 | 605.64 |
| 32 | 1.5.2.1 | Flow Charts and Diagrams | 1d | 2013-09-16 A | 2013-09-16 A | 21 | 100% |  |  |  |  | Daniel Santiago [50%] | 4h | 4h | 86.52 | 86.52 |
| 33 | 1.5.2.2 | Sandboxed Prototype | 2d | 2013-09-17 A | 2013-09-18 A | 32 | 100% |  |  |  |  | Daniel Santiago [50%] | 8h | 8h | 173.04 | 173.04 |
| 34 | 1.5.2.3 | Middleware and Routes definitions | 2d | 2013-09-24 A | 2013-09-25 A | 33 | 100% |  |  |  |  | Daniel Santiago [50%] | 8h | 8h | 173.04 | 173.04 |
| 35 | 1.5.2.4 | REST API documentation | 1d | 2013-09-26 A | 2013-09-26 A | 34 | 100% |  |  |  |  | Daniel Santiago [50%] | 4h | 4h | 86.52 | 86.52 |
| 36 | 1.5.2.5 | Queries and Data Base Structure | 1d | 2013-09-27 A | 2013-09-27 A | 35 | 100% |  |  |  |  | Daniel Santiago [50%] | 4h | 4h | 86.52 | 86.52 |
| 37 | 1.5.3 | **Account and Repositories Manager** | 9d | 2013-09-16 A | 2013-09-26 A | 21 | 100% |  |  |  |  |  | 36h | 36h | 951.84 | 951.84 |
| 38 | 1.5.3.1 | DB Queries Documentation | 3d | 2013-09-16 A | 2013-09-18 A | 21 | 100% |  |  |  |  | Nelián Colón [50%] | 12h | 12h | 317.28 | 317.28 |
| 39 | 1.5.3.2 | Gathering Information Documentation | 3d | 2013-09-19 A | 2013-09-23 A | 38 | 100% |  |  |  |  | Nelián Colón [50%] | 12h | 12h | 317.28 | 317.28 |
| 40 | 1.5.3.3 | Payment System (Ads) | 3d | 2013-09-24 A | 2013-09-26 A | 39 | 100% |  |  |  |  | Nelián Colón [50%] | 12h | 12h | 317.28 | 317.28 |
| 41 | 1.6 | **Implementation** | 21d | 2013-09-27 A | 2013-10-25 |  | 6% | 19.64d | 0d |  | 2013-10-25 |  | 216h | 14h | 4,999.16 | 302.82 |
| 42 | 1.6.1 | **Front End** | 20d | 2013-09-30 A | 2013-10-25 | 24 | 10% | 18d | 0d |  |  |  | 80h | 8h | 1,730.4 | 173.04 |
| 43 | 1.6.1.1 | Account Manager | 4d | 2013-09-30 A | 2013-10-03 | 24 | 10% | 3.6d | 0.4d | 0d |  | Samuel Rodríguez [50%] | 16h | 1.6h | 346.08 | 34.61 |
| 44 | 1.6.1.2 | Repository Manager | 4d | 2013-10-04 A | 2013-10-09 | 43 | 10% | 3.6d | 0.4d | 0d |  | Samuel Rodríguez [50%] | 16h | 1.6h | 346.08 | 34.61 |
| 45 | 1.6.1.3 | Testing Manager | 4d | 2013-10-10 A | 2013-10-15 | 44 | 10% | 3.6d | 0.3d | 0d |  | Samuel Rodríguez [50%] | 16h | 1.6h | 346.08 | 34.61 |
| 46 | 1.6.1.4 | Source Code Viewer | 3d | 2013-10-16 A | 2013-10-18 | 45 | 10% | 2.7d | 0.3d | 0d |  | Samuel Rodríguez [50%] | 12h | 1.2h | 259.56 | 25.96 |
| 47 | 1.6.1.5 | Source Code Annotation | 3d | 2013-10-21 A | 2013-10-23 | 46 | 10% | 2.7d | 0.2d | 0d |  | Samuel Rodríguez [50%] | 12h | 1.2h | 259.56 | 25.96 |
| 48 | 1.6.1.6 | Grading | 2d | 2013-10-24 A | 2013-10-25 | 47 | 10% | 1.8d | 0d |  |  | Samuel Rodríguez [50%] | 8h | 0.8h | 173.04 | 17.3 |
| 49 | 1.6.2 | **Back End** | 17d | 2013-09-30 A | 2013-10-22 | 31 | 9% | 15.5d | 1d | 0d | 2013-10-25 |  | 68h | 6h | 1,470.84 | 129.78 |
| 50 | 1.6.2.1 | Data Base | 4d | 2013-09-30 A | 2013-10-03 | 31 | 10% | 3.6d | 0.4d | 0d |  | Daniel Santiago [50%] | 16h | 1.6h | 346.08 | 34.61 |
| 51 | 1.6.2.2 | Back End Server | 4d | 2013-10-04 A | 2013-10-09 | 50 | 10% | 3.6d | 0.4d | 0d |  | Daniel Santiago [50%] | 16h | 1.6h | 346.08 | 34.61 |
| 52 | 1.6.2.3 | Testing Framework | 4d | 2013-10-10 A | 2013-10-15 | 51 | 10% | 3.6d | 0.3d | 0d |  | Daniel Santiago [50%] | 16h | 1.6h | 346.08 | 34.61 |
| 53 | 1.6.2.4 | REST API | 3d | 2013-10-16 A | 2013-10-18 | 52 | 10% | 2.7d | 1d | 0d |  | Daniel Santiago [50%] | 12h | 1.2h | 259.56 | 25.96 |
| 54 | 1.6.2.5 | Account and Repositories Controller | 2d | 2013-10-21 | 2013-10-22 | 53 |  |  | 1d | 0d |  | Daniel Santiago [50%] | 8h |  | 173.04 |  |

| ID | WBS | Task | Type | Duration | Start | Finish | Predecessors | Total slack | Free slack | Constraint | Deadline | Resources | Work | Cost |
| --- | --- | --- | --- | --- | --- | --- | --- | --- | --- | --- | --- | --- | --- | --- |
| 55 | 1.6.3 | **Accounts and Repositories Manager** |  | 20d | 2013-09-27 | 2013-10-24 | 37 | 1d |  |  |  |  | 48h | 1,269.12 |
| 56 | 1.6.3.1 | Accounts to Data Base Controllers |  | 5d | 2013-09-27 | 2013-10-03 | 37 | 4d | 0d |  |  | Nelián Colón [50%] | 20h | 528.8 |
| 57 | 1.6.3.2 | Repository Manager |  | 5d | 2013-10-04 | 2013-10-10 | 56 | 4d | 0d |  |  | Nelián Colón [50%] | 20h | 528.8 |
| 58 | 1.6.3.3 | Communication with Back End Server |  | 2d | 2013-10-23 | 2013-10-24 | 50, 51, 52, 53, 54 | 1d |  |  |  | Nelián Colón [50%] | 8h | 211.52 |
| 59 | 1.6.4 | Payment System (Ads) |  | 5d | 2013-10-11 | 2013-10-21 | 57 | 4d | 0d |  |  | Nelián Colón [50%] | 20h | 528.8 |
| 60 | 1.7 | **Unit Testing** |  | 6d | 2013-10-23 | 2013-10-29 |  | 3d |  |  |  |  | 28h | 663.36 |
| 61 | 1.7.1 | Front End Testing |  | 2d | 2013-10-26 | 2013-10-28 | 42 | 0d |  |  |  | Samuel Rodríguez [50%] | 8h | 173.04 |
| 62 | 1.7.2 | Back End Testing |  | 2d | 2013-10-23 | 2013-10-24 | 49 | 3d |  |  |  | Daniel Santiago [50%] | 8h | 173.04 |
| 63 | 1.7.3 | Account and Repositories Testing |  | 2d | 2013-10-28 | 2013-10-29 | 55 | 2d |  |  |  | Nelián Colón [50%] | 8h | 211.52 |
| 64 | 1.7.4 | Payment System Testing |  | 1d | 2013-10-25 | 2013-10-25 | 59 | 8d |  |  |  | Nelián Colón [50%] | 4h | 105.76 |
| 65 | 1.8 | **System Integration** |  | 12d | 2013-10-29 | 2013-11-13 |  | 0d |  |  | 2013-11-15 |  | 112h | 2,595.72 |
| 66 | 1.8.1 | Integration of Front End with Back End |  | 3d | 2013-10-29 | 2013-10-31 | 61, 62 | 0d |  |  |  | Daniel Santiago [50%]; Samuel Rodríguez [50%] | 24h | 519.12 |
| 67 | 1.8.2 | Integration of Back End with Account and Repositories Manager |  | 3d | 2013-11-01 | 2013-11-05 | 62, 63, 66 | 0d |  |  |  | Daniel Santiago [50%]; Nelián Colón [50%] | 24h | 576.84 |
| 68 | 1.8.3 | Integration of Ads System |  | 1d | 2013-11-06 | 2013-11-06 | 62, 64, 67 | 0d |  |  |  | Nelián Colón [50%] | 4h | 105.76 |
| 69 | 1.8.4 | Full Integration | milestone | 3d | 2013-11-07 | 2013-11-11 | 66, 67, 68 | 0d |  |  |  | Daniel Santiago [50%]; Nelián Colón [50%]; Samuel Rodríguez [50%] | 36h | 836.4 |
| 70 | 1.8.5 | Integration Testing |  | 2d | 2013-11-12 | 2013-11-13 | 69 | 0d |  |  |  | Daniel Santiago [50%]; Nelián Colón [50%]; Samuel Rodríguez [50%] | 24h | 557.6 |
| 71 | 1.9 | **Delivery** |  | 20d | 2013-11-14 | 2013-12-09 |  | 0d |  |  | 2013-12-09 |  | 96h | 2,230.4 |
| 72 | 1.9.1 | Deployment in Amazon Web Servers EC2 | milestone | 2d | 2013-11-14 | 2013-11-15 | 70 | 0d |  | finish no later than 2013-11-15 |  | Daniel Santiago [50%]; Nelián Colón [50%]; Samuel Rodríguez [50%] | 24h | 557.6 |
| 73 | 1.9.2 | System Demo | milestone | 1d | 2013-12-02 | 2013-12-02 | 72 | 2d |  | finish no earlier than 2013-12-02 |  | Daniel Santiago [50%]; Nelián Colón [50%]; Samuel Rodríguez [50%] | 12h | 278.8 |
| 74 | 1.9.3 | Final Report | milestone | 5d | 2013-12-05 | 2013-12-09 | 73 | 0d |  | finish no earlier than 2013-12-09 |  | Daniel Santiago [50%]; Nelián Colón [50%]; Samuel Rodríguez [50%] | 60h | 1,394 |
